How a schedule from GanttProject changed from version to version. A marks actual dates.

## Version 1 (saved 2025-09-19)

Note of the change: Diagrama Gantt creado

| ID | WBS | Task | Duration | Start | Finish |
| --- | --- | --- | --- | --- | --- |
| 1 | 1 | **TP1:SE** | 103d | 2025-09-16 | 2026-02-05 |
| 2 | 1.1 | **Especificación del proyecto** | 4d | 2025-09-16 | 2025-09-19 |
| 3 |  | Definción de objetivos | 4d | 2025-09-16 | 2025-09-19 |
| 4 |  | Estudio del sistema | 4d | 2025-09-16 | 2025-09-19 |
| 5 | 1.2 | **PCB0: Diseño electronico y captura esquematica PCB0** | 1d | 2025-09-19 | 2025-09-19 |
| 6 |  | Busqueda de componentes | 1d | 2025-09-19 | 2025-09-19 |
| 7 |  | Posicionamiento componentes | 1d | 2025-09-19 | 2025-09-19 |
| 8 |  | Creación de nuevos componentes | 1d | 2025-09-19 | 2025-09-19 |
| 9 |  | Documentación esquemático. Control de cambios | 1d | 2025-09-19 | 2025-09-19 |
| 10 |  | Análisis consumo eléctrico | 1d | 2025-09-19 | 2025-09-19 |
| 11 |  | Análisis disipación de potencia | 1d | 2025-09-19 | 2025-09-19 |
| 12 |  | Rutado de conexiones | 1d | 2025-09-19 | 2025-09-19 |
| 13 |  | Generación de listado de materiales (BOM) | 1d | 2025-09-19 | 2025-09-19 |
| 14 | 1.3 | **PCB1:Diseño electrónico y captura esquemática** | 1d | 2025-09-19 | 2025-09-19 |
| 15 |  | Búsqueda de componentes | 1d | 2025-09-19 | 2025-09-19 |
| 16 |  | Posicionado componentes | 1d | 2025-09-19 | 2025-09-19 |
| 17 |  | Creación de nuevos componentes | 1d | 2025-09-19 | 2025-09-19 |
| 18 |  | Documentación esquemático. Control de cambios | 1d | 2025-09-19 | 2025-09-19 |
| 19 |  | Análisis consumo eléctrico | 1d | 2025-09-19 | 2025-09-19 |
| 20 |  | Análisis disipación de potencia | 1d | 2025-09-19 | 2025-09-19 |
| 21 |  | Rutado de conexiones | 1d | 2025-09-19 | 2025-09-19 |
| 22 |  | Generación de listado de materiales (BOM) | 1d | 2025-09-19 | 2025-09-19 |
| 23 | 1.4 | **PCB2 :Diseño electrónico y captura esquemática** | 1d | 2025-09-19 | 2025-09-19 |
| 24 |  | Búsqueda de componentes | 1d | 2025-09-19 | 2025-09-19 |
| 25 |  | Posicionado componentes | 1d | 2025-09-19 | 2025-09-19 |
| 26 |  | Creación de nuevos componentes | 1d | 2025-09-19 | 2025-09-19 |
| 27 |  | Documentación esquemático. Control de cambios | 1d | 2025-09-19 | 2025-09-19 |
| 28 |  | Análisis consumo eléctrico | 1d | 2025-09-19 | 2025-09-19 |
| 29 |  | Análisis disipación de potencia | 1d | 2025-09-19 | 2025-09-19 |
| 30 |  | Rutado de conexiones | 1d | 2025-09-19 | 2025-09-19 |
| 31 |  | Generación de listado de materiales (BOM) | 1d | 2025-09-19 | 2025-09-19 |
| 32 | 1.5 | **PCB3:Diseño electrónico y captura esquemática** | 1d | 2025-09-19 | 2025-09-19 |
| 33 |  | Búsqueda de componentes | 1d | 2025-09-19 | 2025-09-19 |
| 34 |  | Posicionado componentes | 1d | 2025-09-19 | 2025-09-19 |
| 35 |  | Creación de nuevos componentes | 1d | 2025-09-19 | 2025-09-19 |
| 36 |  | Documentación esquemático. Control de cambios | 1d | 2025-09-19 | 2025-09-19 |
| 37 |  | Análisis consumo eléctrico | 1d | 2025-09-19 | 2025-09-19 |
| 38 |  | Análisis disipación de potencia | 1d | 2025-09-19 | 2025-09-19 |
| 39 |  | Rutado de conexiones | 1d | 2025-09-19 | 2025-09-19 |
| 40 |  | Generación de listado de materiales (BOM) | 1d | 2025-09-19 | 2025-09-19 |
| 41 | 1.6 | **PCB0: Diseño de la placa de circuito impreso** | 1d | 2025-09-19 | 2025-09-19 |
| 42 |  | Creación de huellas de nuevos componentes | 1d | 2025-09-19 | 2025-09-19 |
| 43 |  | Posicionado de componentes | 1d | 2025-09-19 | 2025-09-19 |
| 44 |  | Definición de borde y zonas de conectores | 1d | 2025-09-19 | 2025-09-19 |
| 45 |  | Rutado de conexiones | 1d | 2025-09-19 | 2025-09-19 |
| 46 |  | Planos de disipación térmica | 1d | 2025-09-19 | 2025-09-19 |
| 47 |  | Planos de masa y otros | 1d | 2025-09-19 | 2025-09-19 |
| 48 |  | Documentación: serigrafía. Control de cambios | 1d | 2025-09-19 | 2025-09-19 |
| 49 |  | Documentación: acotaciones geométricas | 1d | 2025-09-19 | 2025-09-19 |
| 50 |  | Generación de ficheros para el fabricante (gerber) | 1d | 2025-09-19 | 2025-09-19 |
| 51 | 1.7 | **PCB1:Diseño de la placa de circuito impreso** | 1d | 2025-09-19 | 2025-09-19 |
| 52 |  | Creación de huellas de nuevos componentes | 1d | 2025-09-19 | 2025-09-19 |
| 53 |  | Posicionado de componentes | 1d | 2025-09-19 | 2025-09-19 |
| 54 |  | Definición de borde y zonas de conectores | 1d | 2025-09-19 | 2025-09-19 |
| 55 |  | Rutado de conexiones | 1d | 2025-09-19 | 2025-09-19 |
| 56 |  | Planos de disipación térmica | 1d | 2025-09-19 | 2025-09-19 |
| 57 |  | Planos de masa y otros | 1d | 2025-09-19 | 2025-09-19 |
| 58 |  | Documentación: serigrafía. Control de cambios | 1d | 2025-09-19 | 2025-09-19 |
| 59 |  | Documentación: acotaciones geométricas | 1d | 2025-09-19 | 2025-09-19 |
| 60 |  | Generación de ficheros para el fabricante (gerber) | 1d | 2025-09-19 | 2025-09-19 |
| 61 | 1.8 | **PCB2: Diseño de la placa de circuito impreso** | 1d | 2025-09-19 | 2025-09-19 |
| 62 |  | Creación de huellas de nuevos componentes | 1d | 2025-09-19 | 2025-09-19 |
| 63 |  | Posicionado de componentes | 1d | 2025-09-19 | 2025-09-19 |
| 64 |  | Definición de borde y zonas de conectores | 1d | 2025-09-19 | 2025-09-19 |
| 65 |  | Rutado de conexiones | 1d | 2025-09-19 | 2025-09-19 |
| 66 |  | Planos de disipación térmica | 1d | 2025-09-19 | 2025-09-19 |
| 67 |  | Planos de masa y otros | 1d | 2025-09-19 | 2025-09-19 |
| 68 |  | Documentación: serigrafía. Control de cambios | 1d | 2025-09-19 | 2025-09-19 |
| 69 |  | Documentación: acotaciones geométricas | 1d | 2025-09-19 | 2025-09-19 |
| 70 |  | Generación de ficheros para el fabricante (gerber) | 1d | 2025-09-19 | 2025-09-19 |

| ID | WBS | Task | Duration | Start | Finish |
| --- | --- | --- | --- | --- | --- |
| 71 | 1.9 | **PCB3: Diseño de la placa de circuito impreso** | 1d | 2025-09-19 | 2025-09-19 |
| 72 |  | Creación de huellas de nuevos componentes | 1d | 2025-09-19 | 2025-09-19 |
| 73 |  | Posicionado de componentes | 1d | 2025-09-19 | 2025-09-19 |
| 74 |  | Definición de borde y zonas de conectores | 1d | 2025-09-19 | 2025-09-19 |
| 75 |  | Rutado de conexiones | 1d | 2025-09-19 | 2025-09-19 |
| 76 |  | Planos de disipación térmica | 1d | 2025-09-19 | 2025-09-19 |
| 77 |  | Planos de masa y otros | 1d | 2025-09-19 | 2025-09-19 |
| 78 |  | Documentación: serigrafía. Control de cambios | 1d | 2025-09-19 | 2025-09-19 |
| 79 |  | Documentación: acotaciones geométricas | 1d | 2025-09-19 | 2025-09-19 |
| 80 |  | Generación de ficheros para el fabricante (gerber) | 1d | 2025-09-19 | 2025-09-19 |
| 81 | 1.10 | **Fabricación de la placa de circuito impreso** | 1d | 2025-09-19 | 2025-09-19 |
| 82 |  | Envío al fabricante | 1d | 2025-09-19 | 2025-09-19 |
| 83 |  | Recepción y revisión | 1d | 2025-09-19 | 2025-09-19 |
| 84 |  | Montaje de componentes | 1d | 2025-09-19 | 2025-09-19 |
| 85 | 1.11 | **Realización Hardware FPGA.** | 1d | 2025-09-19 | 2025-09-19 |
| 86 |  | Core: LarVA. | 1d | 2025-09-19 | 2025-09-19 |
| 87 |  | Periféricos: UART0/1/2, SPI0/1, Temporizador, GPOut, GPIn,.. | 1d | 2025-09-19 | 2025-09-19 |
| 88 |  | Simulación | 1d | 2025-09-19 | 2025-09-19 |
| 89 | 1.12 | **Realización Firmware. Simulación y depuración** | 1d | 2025-09-19 | 2025-09-19 |
| 90 |  | Control de elementos hardware: drivers | 1d | 2025-09-19 | 2025-09-19 |
| 91 |  | Verificación | 1d | 2025-09-19 | 2025-09-19 |
| 92 |  | Programa principal. Especificaciones | 1d | 2025-09-19 | 2025-09-19 |
| 93 |  | Documentación firmware. Control de cambios | 1d | 2025-09-19 | 2025-09-19 |
| 94 | 1.13 | **Verificación hardware** | 1d | 2025-09-19 | 2025-09-19 |
| 95 |  | Verificación inicial | 1d | 2025-09-19 | 2025-09-19 |
| 96 |  | Verificación firmware | 1d | 2025-09-19 | 2025-09-19 |
| 97 |  | Resolución de problemas | 1d | 2025-09-19 | 2025-09-19 |
| 98 |  | Análisis de prestaciones | 1d | 2025-09-19 | 2025-09-19 |
| 99 |  | Montaje final. Piezas mecánicas | 1d | 2025-09-19 | 2025-09-19 |
| 100 |  | Pruebas de campo | 1d | 2025-09-19 | 2025-09-19 |
| 101 | 1.14 | **Documentación** | 1d | 2025-09-19 | 2025-09-19 |
| 102 |  | Realización informe | 1d | 2025-09-19 | 2025-09-19 |
| 103 |  | ENTREGA 1 SEMANA | 0d | 2025-09-19 | 2025-09-19 |
| 104 |  | ENTREGA 2 SEMANA | 0d | 2025-09-26 | 2025-09-26 |
| 105 |  | ENTREGA 3 SEMANA | 0d | 2025-10-03 | 2025-10-03 |
| 106 |  | ENTREGA 4 SEMANA | 0d | 2025-10-10 | 2025-10-10 |
| 107 |  | ENTREGA 5 SEMANA | 0d | 2025-10-17 | 2025-10-17 |
| 108 |  | ENTREGA 6 SEMANA | 0d | 2025-10-24 | 2025-10-24 |
| 109 |  | ENTREGA 7 SEMANA | 0d | 2025-10-31 | 2025-10-31 |
| 110 |  | ENTREGA 8 SEMANA | 0d | 2025-11-07 | 2025-11-07 |
| 111 |  | ENTREGA 9 SEMANA | 0d | 2025-11-21 | 2025-11-21 |
| 112 |  | ENTREGA 10 SEMANA | 0d | 2025-11-28 | 2025-11-28 |
| 113 |  | ENTREGA 11 SEMANA | 0d | 2025-12-05 | 2025-12-05 |
| 114 |  | ENTREGA 12 SEMANA | 0d | 2025-12-12 | 2025-12-12 |
| 115 |  | ENTREGA 13 SEMANA | 0d | 2025-12-19 | 2025-12-19 |
| 116 |  | ENTREGA 14 SEMANA | 0d | 2026-01-09 | 2026-01-09 |
| 117 |  | ENTREGA 15 SEMANA | 0d | 2026-01-16 | 2026-01-16 |
| 118 |  | ENTREGA 16 SEMANA | 0d | 2026-01-21 | 2026-01-21 |
| 119 |  | ENTREGA FINAL | 0d | 2026-02-06 | 2026-02-06 |

## Version 2 (saved 2025-09-23)

Note of the change: ACTUALIZADO DIAGRAMA DE GANTT

Last finish stays 2026-02-06. Complete tasks 0 → 1.

Added:

| ID | Task | Duration | Start | Finish |
| --- | --- | --- | --- | --- |
| 17 | Busqueda de componentes | 1d | 2025-09-29 | 2025-09-29 |
| 19 | Posicionamiento componentes | 3d | 2025-09-30 | 2025-10-02 |
| 26 | Busqueda de componentes | 1d | 2025-09-29 | 2025-09-29 |
| 28 | Posicionamiento componentes | 3d | 2025-09-30 | 2025-10-02 |
| 35 | Busqueda de componentes | 1d | 2025-09-29 | 2025-09-29 |
| 37 | Posicionamiento componentes | 3d | 2025-09-30 | 2025-10-02 |

Removed: 15 Búsqueda de componentes; 16 Posicionado componentes; 24 Búsqueda de componentes; 25 Posicionado componentes; 33 Búsqueda de componentes; 34 Posicionado componentes

Changed:

| ID | Task | Start | Finish | Duration | Complete | Predecessors | Other |
| --- | --- | --- | --- | --- | --- | --- | --- |
| 1 | **TP1:SE** | 2025-09-16 → 2025-09-15 (-1d) |  | 103d → 104d |  |  |  |
| 2 | **Especificación del proyecto** | 2025-09-16 → 2025-09-15 (-1d) | 2025-09-19 → 2025-09-25 (+6d) | 4d → 9d | 0% → 75% |  |  |
| 3 | Definción de objetivos | 2025-09-16 → 2025-09-15 (-1d) | 2025-09-19 → 2025-09-18 (-1d) |  | 0% → 100% |  |  |
| 4 | Estudio del sistema | 2025-09-16 → 2025-09-22 (+6d) | 2025-09-19 → 2025-09-25 (+6d) |  | 0% → 50% |  |  |
| 5 | ENTREGA 1 SEMANA |  |  |  |  |  | resources none → Víctor Sánchez Valencia |
| 6 | ENTREGA 2 SEMANA |  |  |  |  |  | resources none → Clara Ruiz de las Heras |
| 7 | **PCB0: Diseño electronico y captura esquematica PCB0** | 2025-09-19 → 2025-09-29 (+10d) | 2025-09-19 → 2025-10-16 (+27d) | 1d → 14d |  |  |  |
| 8 | Busqueda de componentes | 2025-09-19 → 2025-09-29 (+10d) | 2025-09-19 → 2025-09-29 (+10d) |  |  |  |  |
| 9 | Creación de nuevos componentes | 2025-09-19 → 2025-09-30 (+11d) | 2025-09-19 → 2025-10-01 (+12d) | 1d → 2d |  | none → 8 |  |
| 10 | Posicionamiento componentes | 2025-09-19 → 2025-09-30 (+11d) | 2025-09-19 → 2025-10-02 (+13d) | 1d → 3d |  |  |  |
| 11 | Análisis consumo eléctrico | 2025-09-19 → 2025-10-03 (+14d) | 2025-09-19 → 2025-10-08 (+19d) | 1d → 4d |  |  |  |
| 12 | Análisis disipación de potencia | 2025-09-19 → 2025-10-08 (+19d) | 2025-09-19 → 2025-10-13 (+24d) | 1d → 4d |  |  |  |
| 13 | Rutado de conexiones | 2025-09-19 → 2025-10-13 (+24d) | 2025-09-19 → 2025-10-16 (+27d) | 1d → 4d |  |  |  |
| 14 | Generación de listado de materiales (BOM) | 2025-09-19 → 2025-09-29 (+10d) | 2025-09-19 → 2025-10-16 (+27d) | 1d → 14d |  |  |  |
| 15 | Documentación esquemático. Control de cambios | 2025-09-19 → 2025-09-29 (+10d) | 2025-09-19 → 2025-10-16 (+27d) | 1d → 14d |  |  |  |
| 16 | **PCB1:Diseño electrónico y captura esquemática** | 2025-09-19 → 2025-09-29 (+10d) | 2025-09-19 → 2025-10-16 (+27d) | 1d → 14d |  |  |  |
| 18 | Creación de nuevos componentes | 2025-09-19 → 2025-09-30 (+11d) | 2025-09-19 → 2025-10-01 (+12d) | 1d → 2d |  |  |  |
| 20 | Análisis consumo eléctrico | 2025-09-19 → 2025-10-03 (+14d) | 2025-09-19 → 2025-10-08 (+19d) | 1d → 4d |  |  |  |
| 21 | Análisis disipación de potencia | 2025-09-19 → 2025-10-08 (+19d) | 2025-09-19 → 2025-10-13 (+24d) | 1d → 4d |  |  |  |
| 22 | Rutado de conexiones | 2025-09-19 → 2025-10-13 (+24d) | 2025-09-19 → 2025-10-16 (+27d) | 1d → 4d |  |  |  |
| 23 | Generación de listado de materiales (BOM) | 2025-09-19 → 2025-09-29 (+10d) | 2025-09-19 → 2025-10-16 (+27d) | 1d → 14d |  |  |  |
| 24 | Documentación esquemático. Control de cambios | 2025-09-19 → 2025-09-29 (+10d) | 2025-09-19 → 2025-10-16 (+27d) | 1d → 14d |  |  |  |
| 25 | **PCB2 :Diseño electrónico y captura esquemática** | 2025-09-19 → 2025-09-29 (+10d) | 2025-09-19 → 2025-10-16 (+27d) | 1d → 14d |  |  |  |
| 27 | Creación de nuevos componentes | 2025-09-19 → 2025-09-30 (+11d) | 2025-09-19 → 2025-10-01 (+12d) | 1d → 2d |  |  |  |
| 29 | Análisis consumo eléctrico | 2025-09-19 → 2025-10-03 (+14d) | 2025-09-19 → 2025-10-08 (+19d) | 1d → 4d |  |  |  |
| 30 | Análisis disipación de potencia | 2025-09-19 → 2025-10-08 (+19d) | 2025-09-19 → 2025-10-13 (+24d) | 1d → 4d |  |  |  |
| 31 | Rutado de conexiones | 2025-09-19 → 2025-10-13 (+24d) | 2025-09-19 → 2025-10-16 (+27d) | 1d → 4d |  |  |  |
| 32 | Generación de listado de materiales (BOM) | 2025-09-19 → 2025-09-29 (+10d) | 2025-09-19 → 2025-10-16 (+27d) | 1d → 14d |  |  |  |
| 33 | Documentación esquemático. Control de cambios | 2025-09-19 → 2025-09-29 (+10d) | 2025-09-19 → 2025-10-16 (+27d) | 1d → 14d |  |  |  |
| 34 | **PCB3:Diseño electrónico y captura esquemática** | 2025-09-19 → 2025-09-29 (+10d) | 2025-09-19 → 2025-10-16 (+27d) | 1d → 14d |  |  |  |
| 36 | Creación de nuevos componentes | 2025-09-19 → 2025-09-30 (+11d) | 2025-09-19 → 2025-10-01 (+12d) | 1d → 2d |  |  |  |
| 38 | Análisis consumo eléctrico | 2025-09-19 → 2025-10-03 (+14d) | 2025-09-19 → 2025-10-08 (+19d) | 1d → 4d |  |  |  |
| 39 | Análisis disipación de potencia | 2025-09-19 → 2025-10-08 (+19d) | 2025-09-19 → 2025-10-13 (+24d) | 1d → 4d |  |  |  |
| 40 | Rutado de conexiones | 2025-09-19 → 2025-10-13 (+24d) | 2025-09-19 → 2025-10-16 (+27d) | 1d → 4d |  |  |  |
| 41 | Generación de listado de materiales (BOM) | 2025-09-19 → 2025-09-29 (+10d) | 2025-09-19 → 2025-10-16 (+27d) | 1d → 14d |  |  |  |
| 42 | Documentación esquemático. Control de cambios | 2025-09-19 → 2025-09-29 (+10d) | 2025-09-19 → 2025-10-16 (+27d) | 1d → 14d |  |  |  |
| 43 | ENTREGA 3 SEMANA |  |  |  |  |  | resources none → Miguel Barrigón Gómez |
| 44 | ENTREGA 4 SEMANA |  |  |  |  |  | resources none → Mario Medrano Paredes |
| 45 | ENTREGA 5 SEMANA |  |  |  |  |  | resources none → Víctor Sánchez Valencia |
| 46 | **PCB0: Diseño de la placa de circuito impreso** | 2025-09-19 → 2025-10-17 (+28d) | 2025-09-19 → 2025-11-07 (+49d) | 1d → 16d |  |  |  |
| 47 | Creación de huellas de nuevos componentes | 2025-09-19 → 2025-10-17 (+28d) | 2025-09-19 → 2025-10-23 (+34d) | 1d → 5d |  |  |  |
| 48 | Posicionado de componentes | 2025-09-19 → 2025-10-17 (+28d) | 2025-09-19 → 2025-10-23 (+34d) | 1d → 5d |  |  |  |
| 49 | Definición de borde y zonas de conectores | 2025-09-19 → 2025-10-17 (+28d) | 2025-09-19 → 2025-10-23 (+34d) | 1d → 5d |  |  |  |
| 50 | Documentación: acotaciones geométricas | 2025-09-19 → 2025-10-23 (+34d) | 2025-09-19 → 2025-11-06 (+48d) | 1d → 11d |  |  |  |
| 51 | Planos de masa y otros | 2025-09-19 → 2025-10-23 (+34d) | 2025-09-19 → 2025-10-27 (+38d) | 1d → 3d |  |  |  |
| 52 | Rutado de conexiones | 2025-09-19 → 2025-10-23 (+34d) | 2025-09-19 → 2025-10-29 (+40d) | 1d → 5d |  |  |  |
| 53 | Planos de disipación térmica | 2025-09-19 → 2025-10-23 (+34d) | 2025-09-19 → 2025-10-24 (+35d) | 1d → 2d |  |  |  |
| 54 | Generación de ficheros para el fabricante (gerber) | 2025-09-19 → 2025-10-30 (+41d) | 2025-09-19 → 2025-11-07 (+49d) | 1d → 7d |  |  |  |
| 55 | Documentación: serigrafía. Control de cambios | 2025-09-19 → 2025-10-17 (+28d) | 2025-09-19 → 2025-11-06 (+48d) | 1d → 15d |  |  |  |
| 56 | **PCB1:Diseño de la placa de circuito impreso** | 2025-09-19 → 2025-10-17 (+28d) | 2025-09-19 → 2025-11-07 (+49d) | 1d → 16d |  |  |  |
| 57 | Creación de huellas de nuevos componentes | 2025-09-19 → 2025-10-17 (+28d) | 2025-09-19 → 2025-10-23 (+34d) | 1d → 5d |  |  |  |
| 58 | Posicionado de componentes | 2025-09-19 → 2025-10-17 (+28d) | 2025-09-19 → 2025-10-23 (+34d) | 1d → 5d |  |  |  |
| 59 | Definición de borde y zonas de conectores | 2025-09-19 → 2025-10-17 (+28d) | 2025-09-19 → 2025-10-23 (+34d) | 1d → 5d |  |  |  |
| 60 | Documentación: acotaciones geométricas | 2025-09-19 → 2025-10-23 (+34d) | 2025-09-19 → 2025-11-06 (+48d) | 1d → 11d |  |  |  |
| 61 | Planos de masa y otros | 2025-09-19 → 2025-10-23 (+34d) | 2025-09-19 → 2025-10-27 (+38d) | 1d → 3d |  |  |  |
| 62 | Rutado de conexiones | 2025-09-19 → 2025-10-23 (+34d) | 2025-09-19 → 2025-10-29 (+40d) | 1d → 5d |  |  |  |
| 63 | Planos de disipación térmica | 2025-09-19 → 2025-10-23 (+34d) | 2025-09-19 → 2025-10-24 (+35d) | 1d → 2d |  |  |  |
| 64 | Generación de ficheros para el fabricante (gerber) | 2025-09-19 → 2025-10-30 (+41d) | 2025-09-19 → 2025-11-07 (+49d) | 1d → 7d |  |  |  |
| 65 | Documentación: serigrafía. Control de cambios | 2025-09-19 → 2025-10-17 (+28d) | 2025-09-19 → 2025-11-06 (+48d) | 1d → 15d |  |  |  |
| 66 | **PCB2: Diseño de la placa de circuito impreso** | 2025-09-19 → 2025-10-17 (+28d) | 2025-09-19 → 2025-11-07 (+49d) | 1d → 16d |  |  |  |
| 67 | Creación de huellas de nuevos componentes | 2025-09-19 → 2025-10-17 (+28d) | 2025-09-19 → 2025-10-23 (+34d) | 1d → 5d |  |  |  |
| 68 | Posicionado de componentes | 2025-09-19 → 2025-10-17 (+28d) | 2025-09-19 → 2025-10-23 (+34d) | 1d → 5d |  |  |  |
| 69 | Definición de borde y zonas de conectores | 2025-09-19 → 2025-10-17 (+28d) | 2025-09-19 → 2025-10-23 (+34d) | 1d → 5d |  |  |  |
| 70 | Documentación: acotaciones geométricas | 2025-09-19 → 2025-10-23 (+34d) | 2025-09-19 → 2025-11-06 (+48d) | 1d → 11d |  |  |  |
| 71 | Planos de masa y otros | 2025-09-19 → 2025-10-23 (+34d) | 2025-09-19 → 2025-10-27 (+38d) | 1d → 3d |  |  |  |
| 72 | Rutado de conexiones | 2025-09-19 → 2025-10-23 (+34d) | 2025-09-19 → 2025-10-29 (+40d) | 1d → 5d |  |  |  |
| 73 | Planos de disipación térmica | 2025-09-19 → 2025-10-23 (+34d) | 2025-09-19 → 2025-10-24 (+35d) | 1d → 2d |  |  |  |
| 74 | Generación de ficheros para el fabricante (gerber) | 2025-09-19 → 2025-10-30 (+41d) | 2025-09-19 → 2025-11-07 (+49d) | 1d → 7d |  |  |  |
| 75 | Documentación: serigrafía. Control de cambios | 2025-09-19 → 2025-10-17 (+28d) | 2025-09-19 → 2025-11-06 (+48d) | 1d → 15d |  |  |  |
| 76 | **PCB3: Diseño de la placa de circuito impreso** | 2025-09-19 → 2025-10-17 (+28d) | 2025-09-19 → 2025-11-07 (+49d) | 1d → 16d |  |  |  |

| ID | Task | Start | Finish | Duration | Other |
| --- | --- | --- | --- | --- | --- |
| 77 | Creación de huellas de nuevos componentes | 2025-09-19 → 2025-10-17 (+28d) | 2025-09-19 → 2025-10-23 (+34d) | 1d → 5d |  |
| 78 | Posicionado de componentes | 2025-09-19 → 2025-10-17 (+28d) | 2025-09-19 → 2025-10-23 (+34d) | 1d → 5d |  |
| 79 | Definición de borde y zonas de conectores | 2025-09-19 → 2025-10-17 (+28d) | 2025-09-19 → 2025-10-23 (+34d) | 1d → 5d |  |
| 80 | Documentación: acotaciones geométricas | 2025-09-19 → 2025-10-23 (+34d) | 2025-09-19 → 2025-11-06 (+48d) | 1d → 11d |  |
| 81 | Planos de masa y otros | 2025-09-19 → 2025-10-23 (+34d) | 2025-09-19 → 2025-10-27 (+38d) | 1d → 3d |  |
| 82 | Rutado de conexiones | 2025-09-19 → 2025-10-23 (+34d) | 2025-09-19 → 2025-10-29 (+40d) | 1d → 5d |  |
| 83 | Planos de disipación térmica | 2025-09-19 → 2025-10-23 (+34d) | 2025-09-19 → 2025-10-24 (+35d) | 1d → 2d |  |
| 84 | Generación de ficheros para el fabricante (gerber) | 2025-09-19 → 2025-10-30 (+41d) | 2025-09-19 → 2025-11-07 (+49d) | 1d → 7d |  |
| 85 | Documentación: serigrafía. Control de cambios | 2025-09-19 → 2025-10-24 (+35d) | 2025-09-19 → 2025-11-06 (+48d) | 1d → 10d |  |
| 86 | ENTREGA 6 SEMANA |  |  |  | resources none → Clara Ruiz de las Heras |
| 87 | ENTREGA 7 SEMANA |  |  |  | resources none → Miguel Barrigón Gómez |
| 88 | ENTREGA 8 SEMANA |  |  |  | resources none → Mario Medrano Paredes |
| 89 | **Fabricación de la placa de circuito impreso** | 2025-09-19 → 2025-11-07 (+49d) | 2025-09-19 → 2025-11-21 (+63d) | 1d → 11d |  |
| 90 | Envío al fabricante | 2025-09-19 → 2025-11-07 (+49d) | 2025-09-19 → 2025-11-13 (+55d) | 1d → 5d |  |
| 91 | Recepción y revisión | 2025-09-19 → 2025-11-13 (+55d) | 2025-09-19 → 2025-11-14 (+56d) | 1d → 2d |  |
| 92 | Montaje de componentes | 2025-09-19 → 2025-11-14 (+56d) | 2025-09-19 → 2025-11-21 (+63d) | 1d → 6d |  |
| 93 | ENTREGA 9 SEMANA |  |  |  | resources none → Víctor Sánchez Valencia |
| 94 | **Realización Hardware FPGA.** | 2025-09-19 → 2025-11-21 (+63d) | 2025-09-19 → 2025-12-11 (+83d) | 1d → 15d |  |
| 95 | Core: LarVA. | 2025-09-19 → 2025-11-21 (+63d) | 2025-09-19 → 2025-12-11 (+83d) | 1d → 15d |  |
| 96 | Periféricos: UART0/1/2, SPI0/1, Temporizador, GPOut, GPIn,.. | 2025-09-19 → 2025-11-21 (+63d) | 2025-09-19 → 2025-12-11 (+83d) | 1d → 15d |  |
| 97 | Simulación | 2025-09-19 → 2025-11-21 (+63d) | 2025-09-19 → 2025-12-11 (+83d) | 1d → 15d |  |
| 98 | ENTREGA 10 SEMANA |  |  |  | resources none → Clara Ruiz de las Heras |
| 99 | ENTREGA 11 SEMANA |  |  |  | resources none → Miguel Barrigón Gómez |
| 100 | **Realización Firmware. Simulación y depuración** | 2025-09-19 → 2025-12-11 (+83d) | 2025-09-19 → 2025-12-30 (+102d) | 1d → 14d |  |
| 101 | Control de elementos hardware: drivers | 2025-09-19 → 2025-12-11 (+83d) | 2025-09-19 → 2025-12-30 (+102d) | 1d → 14d |  |
| 102 | Verificación | 2025-09-19 → 2025-12-11 (+83d) | 2025-09-19 → 2025-12-30 (+102d) | 1d → 14d |  |
| 103 | Programa principal. Especificaciones | 2025-09-19 → 2025-12-11 (+83d) | 2025-09-19 → 2025-12-30 (+102d) | 1d → 14d |  |
| 104 | Documentación firmware. Control de cambios | 2025-09-19 → 2025-12-11 (+83d) | 2025-09-19 → 2025-12-30 (+102d) | 1d → 14d |  |
| 105 | **Verificación hardware** | 2025-09-19 → 2025-12-11 (+83d) | 2025-09-19 → 2026-02-05 (+139d) | 1d → 41d |  |
| 106 | Verificación inicial | 2025-09-19 → 2025-12-11 (+83d) | 2025-09-19 → 2026-01-07 (+110d) | 1d → 20d |  |
| 107 | Verificación firmware | 2025-09-19 → 2025-12-11 (+83d) | 2025-09-19 → 2026-01-07 (+110d) | 1d → 20d |  |
| 108 | Resolución de problemas | 2025-09-19 → 2025-12-11 (+83d) | 2025-09-19 → 2026-01-07 (+110d) | 1d → 20d |  |
| 109 | Análisis de prestaciones | 2025-09-19 → 2025-12-11 (+83d) | 2025-09-19 → 2026-01-07 (+110d) | 1d → 20d |  |
| 110 | Montaje final. Piezas mecánicas | 2025-09-19 → 2026-01-07 (+110d) | 2025-09-19 → 2026-01-20 (+123d) | 1d → 10d |  |
| 111 | Pruebas de campo | 2025-09-19 → 2026-01-20 (+123d) | 2025-09-19 → 2026-02-05 (+139d) | 1d → 13d |  |
| 112 | ENTREGA 12 SEMANA |  |  |  | resources none → Mario Medrano Paredes |
| 113 | ENTREGA 13 SEMANA |  |  |  | resources none → Víctor Sánchez Valencia |
| 114 | ENTREGA 14 SEMANA |  |  |  | resources none → Clara Ruiz de las Heras |
| 115 | ENTREGA 15 SEMANA |  |  |  | resources none → Miguel Barrigón Gómez |
| 116 | ENTREGA 16 SEMANA |  |  |  | resources none → Mario Medrano Paredes |
| 117 | **Documentación** |  | 2025-09-19 → 2026-02-05 (+139d) | 1d → 100d |  |
| 118 | Realización informe |  | 2025-09-19 → 2026-02-05 (+139d) | 1d → 100d |  |
| 119 | ENTREGA FINAL |  |  |  | resources none → Víctor Sánchez Valencia; Clara Ruiz de las Heras; Miguel Barrigón Gómez; Mario Medrano Paredes |

## Version 3 (saved 2025-09-26)

Note of the change: Actualizado gan 26092025

Last finish stays 2026-02-06. Complete tasks 1 → 2.

Changed:

| ID | Task | Complete | Other |
| --- | --- | --- | --- |
| 1 | **TP1:SE** | 0% → 1% |  |
| 2 | **Especificación del proyecto** | 75% → 100% |  |
| 4 | Estudio del sistema | 50% → 100% |  |
| 7 | **PCB0: Diseño electronico y captura esquematica PCB0** |  | resources none → Clara Ruiz de las Heras |
| 16 | **PCB1:Diseño electrónico y captura esquemática** |  | resources none → Mario Medrano Paredes |
| 25 | **PCB2 :Diseño electrónico y captura esquemática** |  | resources none → Miguel Barrigón Gómez |
| 34 | **PCB3:Diseño electrónico y captura esquemática** |  | resources none → Víctor Sánchez Valencia |

## Version 4 (saved 2025-10-03)

Note of the change: actualizado el diagrama de gantt

Last finish stays 2026-02-06. Complete tasks 2 → 13.

Changed:

| ID | Task | Start | Finish | Duration | Complete | Predecessors | Other |
| --- | --- | --- | --- | --- | --- | --- | --- |
| 1 | **TP1:SE** |  |  |  | 1% → 8% |  |  |
| 2 | **Especificación del proyecto** |  | 2025-09-25 → 2025-09-24 (-1d) | 9d → 8d |  |  |  |
| 4 | Estudio del sistema | 2025-09-22 → 2025-09-19 (-3d) | 2025-09-25 → 2025-09-24 (-1d) |  |  | none → 3 |  |
| 5 | ENTREGA 1 SEMANA |  |  |  | 0% → 100% |  |  |
| 6 | ENTREGA 2 SEMANA |  |  |  | 0% → 100% |  |  |
| 7 | **PCB0: Diseño electronico y captura esquematica PCB0** |  |  |  | 0% → 41% | none → 2 |  |
| 8 | Busqueda de componentes |  |  |  | 0% → 100% |  | resources none → Clara Ruiz de las Heras |
| 9 | Creación de nuevos componentes |  |  |  | 0% → 100% |  |  |
| 10 | Posicionamiento componentes |  |  |  | 0% → 90% | none → 8 | resources none → Clara Ruiz de las Heras |
| 11 | Análisis consumo eléctrico | 2025-10-03 → 2025-09-30 (-3d) | 2025-10-08 → 2025-10-03 (-5d) |  |  | none → 8 | resources none → Clara Ruiz de las Heras |
| 12 | Análisis disipación de potencia | 2025-10-08 → 2025-10-06 (-2d) | 2025-10-13 → 2025-10-09 (-4d) |  |  | none → 11 | resources none → Clara Ruiz de las Heras |
| 13 | Rutado de conexiones | 2025-10-13 → 2025-10-10 (-3d) | 2025-10-16 → 2025-10-15 (-1d) |  |  | none → 12 | resources none → Clara Ruiz de las Heras |
| 14 | Generación de listado de materiales (BOM) | 2025-09-29 → 2025-09-30 (+1d) |  | 14d → 13d | 0% → 90% | none → 8 | resources none → Clara Ruiz de las Heras |
| 15 | Documentación esquemático. Control de cambios |  |  |  | 0% → 10% |  |  |
| 16 | **PCB1:Diseño electrónico y captura esquemática** |  |  |  | 0% → 15% | none → 2 |  |
| 17 | Busqueda de componentes |  |  |  | 0% → 100% |  | resources none → Mario Medrano Paredes |
| 18 | Creación de nuevos componentes |  |  |  | 0% → 100% | none → 17 |  |
| 19 | Posicionamiento componentes |  |  |  | 0% → 90% | none → 17 | resources none → Mario Medrano Paredes |
| 20 | Análisis consumo eléctrico | 2025-10-03 → 2025-09-30 (-3d) | 2025-10-08 → 2025-10-03 (-5d) |  |  | none → 17 |  |
| 21 | Análisis disipación de potencia | 2025-10-08 → 2025-10-06 (-2d) | 2025-10-13 → 2025-10-09 (-4d) |  |  | none → 20 |  |
| 22 | Rutado de conexiones | 2025-10-13 → 2025-10-10 (-3d) | 2025-10-16 → 2025-10-15 (-1d) |  |  | none → 21 | resources none → Mario Medrano Paredes |
| 23 | Generación de listado de materiales (BOM) | 2025-09-29 → 2025-09-30 (+1d) |  | 14d → 13d |  | none → 17 | resources none → Mario Medrano Paredes |
| 24 | Documentación esquemático. Control de cambios |  |  |  | 0% → 10% |  | resources none → Mario Medrano Paredes |
| 25 | **PCB2 :Diseño electrónico y captura esquemática** |  |  |  | 0% → 15% | none → 2 |  |
| 26 | Busqueda de componentes |  |  |  | 0% → 100% |  | resources none → Miguel Barrigón Gómez |
| 27 | Creación de nuevos componentes |  |  |  | 0% → 100% | none → 26 | resources none → Miguel Barrigón Gómez |
| 28 | Posicionamiento componentes |  |  |  | 0% → 90% | none → 26 | resources none → Miguel Barrigón Gómez |
| 29 | Análisis consumo eléctrico | 2025-10-03 → 2025-09-30 (-3d) | 2025-10-08 → 2025-10-03 (-5d) |  |  | none → 26 | resources none → Miguel Barrigón Gómez |
| 30 | Análisis disipación de potencia | 2025-10-08 → 2025-10-06 (-2d) | 2025-10-13 → 2025-10-09 (-4d) |  |  | none → 29 | resources none → Miguel Barrigón Gómez |
| 31 | Rutado de conexiones | 2025-10-13 → 2025-10-10 (-3d) | 2025-10-16 → 2025-10-15 (-1d) |  |  | none → 30 | resources none → Miguel Barrigón Gómez |
| 32 | Generación de listado de materiales (BOM) | 2025-09-29 → 2025-09-30 (+1d) |  | 14d → 13d |  | none → 26 | resources none → Miguel Barrigón Gómez |
| 33 | Documentación esquemático. Control de cambios |  |  |  | 0% → 10% |  | resources none → Miguel Barrigón Gómez |
| 34 | **PCB3:Diseño electrónico y captura esquemática** |  |  |  | 0% → 38% | none → 2 |  |
| 35 | Busqueda de componentes |  |  |  | 0% → 100% |  | resources none → Víctor Sánchez Valencia |
| 36 | Creación de nuevos componentes |  |  |  | 0% → 100% | none → 35 | resources none → Víctor Sánchez Valencia |
| 37 | Posicionamiento componentes |  |  |  | 0% → 90% | none → 35 | resources none → Víctor Sánchez Valencia |
| 38 | Análisis consumo eléctrico | 2025-10-03 → 2025-09-30 (-3d) | 2025-10-08 → 2025-10-03 (-5d) |  |  | none → 35 | resources none → Víctor Sánchez Valencia |
| 39 | Análisis disipación de potencia | 2025-10-08 → 2025-10-06 (-2d) | 2025-10-13 → 2025-10-09 (-4d) |  |  | none → 38 | resources none → Víctor Sánchez Valencia |
| 40 | Rutado de conexiones | 2025-10-13 → 2025-10-10 (-3d) | 2025-10-16 → 2025-10-15 (-1d) |  |  | none → 39 | resources none → Víctor Sánchez Valencia |
| 41 | Generación de listado de materiales (BOM) | 2025-09-29 → 2025-09-30 (+1d) |  | 14d → 13d | 0% → 80% | none → 35 | resources none → Víctor Sánchez Valencia |
| 42 | Documentación esquemático. Control de cambios |  |  |  | 0% → 10% |  | resources none → Víctor Sánchez Valencia |
| 43 | ENTREGA 3 SEMANA |  |  |  | 0% → 100% |  |  |
| 46 | **PCB0: Diseño de la placa de circuito impreso** |  |  |  |  | none → 7 |  |
| 50 | Documentación: acotaciones geométricas | 2025-10-23 → 2025-10-24 (+1d) | 2025-11-06 → 2025-11-07 (+1d) |  |  | none → 48, 49 |  |
| 51 | Planos de masa y otros | 2025-10-23 → 2025-10-24 (+1d) | 2025-10-27 → 2025-10-28 (+1d) |  |  | none → 49 |  |
| 52 | Rutado de conexiones | 2025-10-23 → 2025-10-24 (+1d) | 2025-10-29 → 2025-10-30 (+1d) |  |  | none → 49 |  |
| 53 | Planos de disipación térmica | 2025-10-23 → 2025-10-24 (+1d) | 2025-10-24 → 2025-10-27 (+3d) |  |  | none → 49 |  |
| 54 | Generación de ficheros para el fabricante (gerber) | 2025-10-30 → 2025-10-29 (-1d) | 2025-11-07 → 2025-11-06 (-1d) |  |  | none → 51, 53 |  |
| 56 | **PCB1:Diseño de la placa de circuito impreso** |  |  |  |  | none → 16 |  |
| 60 | Documentación: acotaciones geométricas | 2025-10-23 → 2025-10-24 (+1d) | 2025-11-06 → 2025-11-07 (+1d) |  |  | none → 58, 59 |  |
| 61 | Planos de masa y otros | 2025-10-23 → 2025-10-24 (+1d) | 2025-10-27 → 2025-10-28 (+1d) |  |  | none → 59 |  |
| 62 | Rutado de conexiones | 2025-10-23 → 2025-10-24 (+1d) | 2025-10-29 → 2025-10-30 (+1d) |  |  | none → 59 |  |
| 63 | Planos de disipación térmica | 2025-10-23 → 2025-10-24 (+1d) | 2025-10-24 → 2025-10-27 (+3d) |  |  | none → 59 |  |
| 64 | Generación de ficheros para el fabricante (gerber) | 2025-10-30 → 2025-10-29 (-1d) | 2025-11-07 → 2025-11-06 (-1d) |  |  | none → 61, 63 |  |
| 66 | **PCB2: Diseño de la placa de circuito impreso** |  |  |  |  | none → 25 |  |
| 70 | Documentación: acotaciones geométricas | 2025-10-23 → 2025-10-24 (+1d) | 2025-11-06 → 2025-11-07 (+1d) |  |  | none → 68, 69 |  |
| 71 | Planos de masa y otros | 2025-10-23 → 2025-10-24 (+1d) | 2025-10-27 → 2025-10-28 (+1d) |  |  | none → 69 |  |
| 72 | Rutado de conexiones | 2025-10-23 → 2025-10-24 (+1d) | 2025-10-29 → 2025-10-30 (+1d) |  |  | none → 69 |  |
| 73 | Planos de disipación térmica | 2025-10-23 → 2025-10-24 (+1d) | 2025-10-24 → 2025-10-27 (+3d) |  |  | none → 69 |  |
| 74 | Generación de ficheros para el fabricante (gerber) | 2025-10-30 → 2025-10-29 (-1d) | 2025-11-07 → 2025-11-06 (-1d) |  |  | none → 71, 73 |  |
| 76 | **PCB3: Diseño de la placa de circuito impreso** |  |  |  |  | none → 34 |  |
| 80 | Documentación: acotaciones geométricas | 2025-10-23 → 2025-10-24 (+1d) | 2025-11-06 → 2025-11-07 (+1d) |  |  | none → 78, 79 |  |
| 81 | Planos de masa y otros | 2025-10-23 → 2025-10-24 (+1d) | 2025-10-27 → 2025-10-28 (+1d) |  |  | none → 79 |  |
| 82 | Rutado de conexiones | 2025-10-23 → 2025-10-24 (+1d) | 2025-10-29 → 2025-10-30 (+1d) |  |  | none → 79 |  |
| 83 | Planos de disipación térmica | 2025-10-23 → 2025-10-24 (+1d) | 2025-10-24 → 2025-10-27 (+3d) |  |  | none → 79 |  |
| 84 | Generación de ficheros para el fabricante (gerber) | 2025-10-30 → 2025-10-29 (-1d) | 2025-11-07 → 2025-11-06 (-1d) |  |  | none → 81, 83 |  |
| 85 | Documentación: serigrafía. Control de cambios | 2025-10-24 → 2025-10-17 (-7d) |  | 10d → 15d |  |  |  |
| 89 | **Fabricación de la placa de circuito impreso** | 2025-11-07 → 2025-11-10 (+3d) | 2025-11-21 → 2025-11-24 (+3d) |  |  | none → 46, 56, 66, 76 |  |
| 90 | Envío al fabricante | 2025-11-07 → 2025-11-10 (+3d) |  | 5d → 4d |  |  |  |
| 91 | Recepción y revisión | 2025-11-13 → 2025-11-14 (+1d) |  | 2d → 1d |  | none → 90 |  |

| ID | Task | Start | Finish | Duration | Predecessors |
| --- | --- | --- | --- | --- | --- |
| 92 | Montaje de componentes | 2025-11-14 → 2025-11-17 (+3d) | 2025-11-21 → 2025-11-24 (+3d) |  | none → 91 |
| 95 | Core: LarVA. |  | 2025-12-11 → 2025-11-27 (-14d) | 15d → 5d |  |
| 96 | Periféricos: UART0/1/2, SPI0/1, Temporizador, GPOut, GPIn,.. |  | 2025-12-11 → 2025-12-01 (-10d) | 15d → 7d |  |
| 97 | Simulación | 2025-11-21 → 2025-12-02 (+11d) |  | 15d → 8d | none → 95, 96 |
| 100 | **Realización Firmware. Simulación y depuración** | 2025-12-11 → 2025-12-12 (+1d) | 2025-12-30 → 2025-12-31 (+1d) |  | none → 94 |
| 101 | Control de elementos hardware: drivers | 2025-12-11 → 2025-12-12 (+1d) | 2025-12-30 → 2025-12-31 (+1d) |  |  |
| 102 | Verificación | 2025-12-11 → 2025-12-12 (+1d) | 2025-12-30 → 2025-12-31 (+1d) |  |  |
| 103 | Programa principal. Especificaciones | 2025-12-11 → 2025-12-12 (+1d) | 2025-12-30 → 2025-12-31 (+1d) |  |  |
| 104 | Documentación firmware. Control de cambios | 2025-12-11 → 2025-12-12 (+1d) | 2025-12-30 → 2025-12-31 (+1d) |  |  |
| 105 | **Verificación hardware** | 2025-12-11 → 2025-12-12 (+1d) |  | 41d → 40d | none → 94 |
| 106 | Verificación inicial | 2025-12-11 → 2025-12-12 (+1d) | 2026-01-07 → 2026-01-08 (+1d) |  |  |
| 107 | Verificación firmware | 2025-12-11 → 2025-12-12 (+1d) | 2026-01-07 → 2026-01-08 (+1d) |  |  |
| 108 | Resolución de problemas | 2025-12-11 → 2025-12-12 (+1d) | 2026-01-07 → 2026-01-08 (+1d) |  |  |
| 109 | Análisis de prestaciones | 2025-12-11 → 2025-12-12 (+1d) | 2026-01-07 → 2026-01-08 (+1d) |  |  |

## Version 5 (saved 2025-10-07)

Note of the change: ACTUALIZADO GANTT

Last finish stays 2026-02-06. Complete tasks 13 → 16.

Changed:

| ID | Task | Complete |
| --- | --- | --- |
| 1 | **TP1:SE** | 8% → 11% |
| 7 | **PCB0: Diseño electronico y captura esquematica PCB0** | 41% → 44% |
| 14 | Generación de listado de materiales (BOM) | 90% → 100% |
| 16 | **PCB1:Diseño electrónico y captura esquemática** | 15% → 44% |
| 23 | Generación de listado de materiales (BOM) | 0% → 100% |
| 25 | **PCB2 :Diseño electrónico y captura esquemática** | 15% → 33% |
| 32 | Generación de listado de materiales (BOM) | 0% → 60% |
| 34 | **PCB3:Diseño electrónico y captura esquemática** | 38% → 44% |
| 41 | Generación de listado de materiales (BOM) | 80% → 100% |

## Version 6 (saved 2025-10-10)

Note of the change: Merge branch 'main' of https://github.com/medpar/TP1-G1

Last finish stays 2026-02-06.

Changed:

| ID | Task | Start | Finish | Duration | Predecessors |
| --- | --- | --- | --- | --- | --- |
| 1 | **TP1:SE** |  | 2026-02-05 → 2026-02-06 (+1d) | 104d → 105d |  |
| 6 | ENTREGA 2 SEMANA | 2025-09-26 → 2025-09-25 (-1d) | 2025-09-26 → 2025-09-25 (-1d) |  |  |
| 7 | **PCB0: Diseño electronico y captura esquematica PCB0** |  |  |  | 2 → none |
| 8 | Busqueda de componentes |  |  |  | none → 4FS+2d |
| 15 | Documentación esquemático. Control de cambios |  |  |  | none → 8SS |
| 16 | **PCB1:Diseño electrónico y captura esquemática** |  |  |  | 2 → none |
| 17 | Busqueda de componentes |  |  |  | none → 4FS+2d |
| 24 | Documentación esquemático. Control de cambios |  |  |  | none → 17SS |
| 25 | **PCB2 :Diseño electrónico y captura esquemática** |  |  |  | 2 → none |
| 26 | Busqueda de componentes |  |  |  | none → 4FS+2d |
| 33 | Documentación esquemático. Control de cambios |  |  |  | none → 26SS |
| 34 | **PCB3:Diseño electrónico y captura esquemática** |  |  |  | 2 → none |
| 35 | Busqueda de componentes |  |  |  | none → 4FS+2d |
| 42 | Documentación esquemático. Control de cambios |  |  |  | none → 35SS |
| 46 | **PCB0: Diseño de la placa de circuito impreso** |  |  |  | 7 → none |
| 47 | Creación de huellas de nuevos componentes |  |  |  | none → 13FS+1d |
| 48 | Posicionado de componentes |  |  |  | none → 47SS |
| 49 | Definición de borde y zonas de conectores |  |  |  | none → 47SS |
| 55 | Documentación: serigrafía. Control de cambios |  |  |  | none → 47SS |
| 56 | **PCB1:Diseño de la placa de circuito impreso** |  |  |  | 16 → none |
| 57 | Creación de huellas de nuevos componentes |  |  |  | none → 22FS+1d |
| 58 | Posicionado de componentes |  |  |  | none → 57SS |
| 59 | Definición de borde y zonas de conectores |  |  |  | none → 57SS |
| 65 | Documentación: serigrafía. Control de cambios |  |  |  | none → 57SS |
| 66 | **PCB2: Diseño de la placa de circuito impreso** |  |  |  | 25 → none |
| 67 | Creación de huellas de nuevos componentes |  |  |  | none → 31FS+1d |
| 68 | Posicionado de componentes |  |  |  | none → 67SS |
| 69 | Definición de borde y zonas de conectores |  |  |  | none → 67SS |
| 75 | Documentación: serigrafía. Control de cambios |  |  |  | none → 67SS |
| 76 | **PCB3: Diseño de la placa de circuito impreso** |  |  |  | 34 → none |
| 77 | Creación de huellas de nuevos componentes |  |  |  | none → 40FS+1d |
| 78 | Posicionado de componentes |  |  |  | none → 77SS |
| 79 | Definición de borde y zonas de conectores |  |  |  | none → 77SS |
| 85 | Documentación: serigrafía. Control de cambios |  |  |  | none → 77SS |
| 89 | **Fabricación de la placa de circuito impreso** |  |  |  | 46, 56, 66, 76 → none |
| 90 | Envío al fabricante |  |  |  | none → 54FS+1d, 64FS+1d, 74FS+1d, 84FS+1d |
| 95 | Core: LarVA. |  |  |  | none → 54FS+10d, 64FS+10d, 74FS+10d, 84FS+10d |
| 96 | Periféricos: UART0/1/2, SPI0/1, Temporizador, GPOut, GPIn,.. |  |  |  | none → 95SS |
| 100 | **Realización Firmware. Simulación y depuración** |  |  |  | 94 → none |
| 101 | Control de elementos hardware: drivers |  |  |  | none → 97 |
| 102 | Verificación |  |  |  | none → 101SS |
| 103 | Programa principal. Especificaciones |  |  |  | none → 101SS |
| 104 | Documentación firmware. Control de cambios |  |  |  | none → 101SS |
| 105 | **Verificación hardware** |  |  |  | 94 → none |
| 106 | Verificación inicial |  |  |  | none → 97 |
| 107 | Verificación firmware |  |  |  | none → 106SS |
| 108 | Resolución de problemas |  |  |  | none → 106SS |
| 109 | Análisis de prestaciones |  |  |  | none → 106SS |
| 110 | Montaje final. Piezas mecánicas | 2026-01-07 → 2026-01-09 (+2d) | 2026-01-20 → 2026-01-22 (+2d) |  | none → 109 |
| 111 | Pruebas de campo | 2026-01-20 → 2026-01-23 (+3d) |  | 13d → 10d | none → 110 |
| 117 | **Documentación** | 2025-09-19 → 2025-09-15 (-4d) | 2026-02-05 → 2026-02-06 (+1d) | 100d → 105d |  |
| 118 | Realización informe | 2025-09-19 → 2025-09-15 (-4d) | 2026-02-05 → 2026-02-06 (+1d) | 100d → 105d | none → 2SS |

## Version 7 (saved 2025-10-14)

Note of the change: actualizado gantt

Last finish stays 2026-02-06. Complete tasks 16 → 17.

Changed:

| ID | Task | Complete |
| --- | --- | --- |
| 1 | **TP1:SE** | 11% → 12% |
| 7 | **PCB0: Diseño electronico y captura esquematica PCB0** | 44% → 56% |
| 11 | Análisis consumo eléctrico | 0% → 30% |
| 15 | Documentación esquemático. Control de cambios | 10% → 40% |
| 16 | **PCB1:Diseño electrónico y captura esquemática** | 44% → 45% |
| 20 | Análisis consumo eléctrico | 0% → 10% |
| 44 | ENTREGA 4 SEMANA | 0% → 100% |

## Version 8 (saved 2025-10-17)

Note of the change: ACTUALIZADO GANTT

Last finish stays 2026-02-06. Complete tasks 17 → 25.

Changed:

| ID | Task | Complete |
| --- | --- | --- |
| 1 | **TP1:SE** | 12% → 15% |
| 7 | **PCB0: Diseño electronico y captura esquematica PCB0** | 56% → 68% |
| 10 | Posicionamiento componentes | 90% → 100% |
| 11 | Análisis consumo eléctrico | 30% → 50% |
| 13 | Rutado de conexiones | 0% → 100% |
| 16 | **PCB1:Diseño electrónico y captura esquemática** | 45% → 56% |
| 19 | Posicionamiento componentes | 90% → 100% |
| 20 | Análisis consumo eléctrico | 10% → 30% |
| 22 | Rutado de conexiones | 0% → 100% |
| 25 | **PCB2 :Diseño electrónico y captura esquemática** | 33% → 42% |
| 28 | Posicionamiento componentes | 90% → 100% |
| 31 | Rutado de conexiones | 0% → 100% |
| 34 | **PCB3:Diseño electrónico y captura esquemática** | 44% → 54% |
| 37 | Posicionamiento componentes | 90% → 100% |
| 40 | Rutado de conexiones | 0% → 100% |

## Version 9 (saved 2025-10-21)

Note of the change: actualizado gantt

Last finish stays 2026-02-06. Complete tasks 25 → 41.

Changed:

| ID | Task | Complete |
| --- | --- | --- |
| 1 | **TP1:SE** | 15% → 24% |
| 7 | **PCB0: Diseño electronico y captura esquematica PCB0** | 68% → 72% |
| 11 | Análisis consumo eléctrico | 50% → 100% |
| 16 | **PCB1:Diseño electrónico y captura esquemática** | 56% → 63% |
| 20 | Análisis consumo eléctrico | 30% → 100% |
| 34 | **PCB3:Diseño electrónico y captura esquemática** | 54% → 63% |
| 38 | Análisis consumo eléctrico | 0% → 100% |
| 45 | ENTREGA 5 SEMANA | 0% → 100% |
| 46 | **PCB0: Diseño de la placa de circuito impreso** | 0% → 25% |
| 47 | Creación de huellas de nuevos componentes | 0% → 100% |
| 48 | Posicionado de componentes | 0% → 100% |
| 49 | Definición de borde y zonas de conectores | 0% → 100% |
| 56 | **PCB1:Diseño de la placa de circuito impreso** | 0% → 25% |
| 57 | Creación de huellas de nuevos componentes | 0% → 100% |
| 58 | Posicionado de componentes | 0% → 100% |
| 59 | Definición de borde y zonas de conectores | 0% → 100% |
| 66 | **PCB2: Diseño de la placa de circuito impreso** | 0% → 25% |
| 67 | Creación de huellas de nuevos componentes | 0% → 100% |
| 68 | Posicionado de componentes | 0% → 100% |
| 69 | Definición de borde y zonas de conectores | 0% → 100% |
| 76 | **PCB3: Diseño de la placa de circuito impreso** | 0% → 25% |
| 77 | Creación de huellas de nuevos componentes | 0% → 100% |
| 78 | Posicionado de componentes | 0% → 100% |
| 79 | Definición de borde y zonas de conectores | 0% → 100% |

## Version 10 (saved 2025-10-24)

Note of the change: gantt

Last finish stays 2026-02-06. Complete tasks 41 → 56.

Changed:

| ID | Task | Complete |
| --- | --- | --- |
| 1 | **TP1:SE** | 24% → 39% |
| 25 | **PCB2 :Diseño electrónico y captura esquemática** | 42% → 63% |
| 29 | Análisis consumo eléctrico | 0% → 100% |
| 32 | Generación de listado de materiales (BOM) | 60% → 100% |
| 46 | **PCB0: Diseño de la placa de circuito impreso** | 25% → 68% |
| 50 | Documentación: acotaciones geométricas | 0% → 100% |
| 51 | Planos de masa y otros | 0% → 100% |
| 52 | Rutado de conexiones | 0% → 100% |
| 54 | Generación de ficheros para el fabricante (gerber) | 0% → 80% |
| 56 | **PCB1:Diseño de la placa de circuito impreso** | 25% → 68% |
| 60 | Documentación: acotaciones geométricas | 0% → 100% |
| 61 | Planos de masa y otros | 0% → 100% |
| 62 | Rutado de conexiones | 0% → 100% |
| 64 | Generación de ficheros para el fabricante (gerber) | 0% → 80% |
| 66 | **PCB2: Diseño de la placa de circuito impreso** | 25% → 68% |
| 70 | Documentación: acotaciones geométricas | 0% → 100% |
| 71 | Planos de masa y otros | 0% → 100% |
| 72 | Rutado de conexiones | 0% → 100% |
| 74 | Generación de ficheros para el fabricante (gerber) | 0% → 80% |
| 76 | **PCB3: Diseño de la placa de circuito impreso** | 25% → 68% |
| 80 | Documentación: acotaciones geométricas | 0% → 100% |
| 81 | Planos de masa y otros | 0% → 100% |
| 82 | Rutado de conexiones | 0% → 100% |
| 84 | Generación de ficheros para el fabricante (gerber) | 0% → 80% |
| 86 | ENTREGA 6 SEMANA | 0% → 100% |

## Version 11 (saved 2025-10-28)

Last finish stays 2026-02-06. Complete tasks 56 → 77.

Changed:

| ID | Task | Complete |
| --- | --- | --- |
| 1 | **TP1:SE** | 39% → 60% |
| 7 | **PCB0: Diseño electronico y captura esquematica PCB0** | 72% → 100% |
| 12 | Análisis disipación de potencia | 0% → 100% |
| 15 | Documentación esquemático. Control de cambios | 40% → 100% |
| 16 | **PCB1:Diseño electrónico y captura esquemática** | 63% → 100% |
| 21 | Análisis disipación de potencia | 0% → 100% |
| 24 | Documentación esquemático. Control de cambios | 10% → 100% |
| 25 | **PCB2 :Diseño electrónico y captura esquemática** | 63% → 100% |
| 30 | Análisis disipación de potencia | 0% → 100% |
| 33 | Documentación esquemático. Control de cambios | 10% → 100% |
| 34 | **PCB3:Diseño electrónico y captura esquemática** | 63% → 100% |
| 39 | Análisis disipación de potencia | 0% → 100% |
| 42 | Documentación esquemático. Control de cambios | 10% → 100% |
| 46 | **PCB0: Diseño de la placa de circuito impreso** | 68% → 100% |
| 53 | Planos de disipación térmica | 0% → 100% |
| 54 | Generación de ficheros para el fabricante (gerber) | 80% → 100% |
| 55 | Documentación: serigrafía. Control de cambios | 0% → 100% |
| 56 | **PCB1:Diseño de la placa de circuito impreso** | 68% → 100% |
| 63 | Planos de disipación térmica | 0% → 100% |
| 64 | Generación de ficheros para el fabricante (gerber) | 80% → 100% |
| 65 | Documentación: serigrafía. Control de cambios | 0% → 100% |
| 66 | **PCB2: Diseño de la placa de circuito impreso** | 68% → 100% |
| 73 | Planos de disipación térmica | 0% → 100% |
| 74 | Generación de ficheros para el fabricante (gerber) | 80% → 100% |
| 75 | Documentación: serigrafía. Control de cambios | 0% → 100% |
| 76 | **PCB3: Diseño de la placa de circuito impreso** | 68% → 100% |
| 83 | Planos de disipación térmica | 0% → 100% |
| 84 | Generación de ficheros para el fabricante (gerber) | 80% → 100% |
| 85 | Documentación: serigrafía. Control de cambios | 0% → 100% |
| 87 | ENTREGA 7 SEMANA | 0% → 100% |
| 117 | **Documentación** | 0% → 10% |
| 118 | Realización informe | 0% → 10% |

## Version 12 (saved 2025-11-06)

Note of the change: actualizado gantt

Last finish stays 2026-02-06. Complete tasks 77 → 78.

Changed:

| ID | Task | Complete |
| --- | --- | --- |
| 1 | **TP1:SE** | 60% → 44% |
| 88 | ENTREGA 8 SEMANA | 0% → 100% |

## Version 13 (saved 2025-11-21)

Note of the change: actualizado documentacion

Last finish stays 2026-02-06. Complete tasks 78 → 80.

Changed:

| ID | Task | Complete |
| --- | --- | --- |
| 1 | **TP1:SE** | 44% → 45% |
| 89 | **Fabricación de la placa de circuito impreso** | 0% → 36% |
| 90 | Envío al fabricante | 0% → 100% |
| 93 | ENTREGA 9 SEMANA | 0% → 100% |

## Version 14 (saved 2025-11-28)

Note of the change: actualizado gantt

Last finish stays 2026-02-06. Complete tasks 80 → 81.

Changed:

| ID | Task | Complete |
| --- | --- | --- |
| 1 | **TP1:SE** | 45% → 46% |
| 89 | **Fabricación de la placa de circuito impreso** | 36% → 41% |
| 92 | Montaje de componentes | 0% → 10% |
| 98 | ENTREGA 10 SEMANA | 0% → 100% |

## Version 15 (saved 2025-12-09)

Note of the change: actualizados algunos ficheros

Last finish stays 2026-02-06. Complete tasks 81 → 83.

Changed:

| ID | Task | Complete |
| --- | --- | --- |
| 1 | **TP1:SE** | 46% → 50% |
| 89 | **Fabricación de la placa de circuito impreso** | 41% → 72% |
| 91 | Recepción y revisión | 0% → 100% |
| 92 | Montaje de componentes | 10% → 50% |
| 94 | **Realización Hardware FPGA.** | 0% → 56% |
| 95 | Core: LarVA. | 0% → 80% |
| 96 | Periféricos: UART0/1/2, SPI0/1, Temporizador, GPOut, GPIn,.. | 0% → 80% |
| 97 | Simulación | 0% → 20% |
| 99 | ENTREGA 11 SEMANA | 0% → 100% |

## Version 16 (saved 2025-12-12)

Note of the change: actualizado gantt

Last finish stays 2026-02-06. Complete tasks 83 → 85.

Changed:

| ID | Task | Complete |
| --- | --- | --- |
| 1 | **TP1:SE** | 50% → 51% |
| 89 | **Fabricación de la placa de circuito impreso** | 72% → 100% |
| 92 | Montaje de componentes | 50% → 100% |
| 112 | ENTREGA 12 SEMANA | 0% → 100% |

## Version 17 (saved 2025-12-16)

Note of the change: actualizado gantt

Last finish stays 2026-02-06. Complete tasks 85 → 86.

Changed:

| ID | Task | Complete |
| --- | --- | --- |
| 113 | ENTREGA 13 SEMANA | 0% → 100% |

## Version 18 (saved 2026-01-06)

Note of the change: añadido gantt

Last finish stays 2026-02-06. Complete tasks 86 → 87.

Changed:

| ID | Task | Complete |
| --- | --- | --- |
| 1 | **TP1:SE** | 51% → 71% |
| 114 | ENTREGA 14 SEMANA | 0% → 100% |
| 117 | **Documentación** | 10% → 70% |
| 118 | Realización informe | 10% → 70% |

## Version 19 (saved 2026-01-19)

Note of the change: añadido gantt y control de cambios

Last finish stays 2026-02-06. Complete tasks 87 → 100.

Removed: 116 ENTREGA 16 SEMANA

Changed:

| ID | Task | Complete |
| --- | --- | --- |
| 1 | **TP1:SE** | 71% → 88% |
| 94 | **Realización Hardware FPGA.** | 56% → 100% |
| 95 | Core: LarVA. | 80% → 100% |
| 96 | Periféricos: UART0/1/2, SPI0/1, Temporizador, GPOut, GPIn,.. | 80% → 100% |
| 97 | Simulación | 20% → 100% |
| 100 | **Realización Firmware. Simulación y depuración** | 0% → 100% |
| 101 | Control de elementos hardware: drivers | 0% → 100% |
| 102 | Verificación | 0% → 100% |
| 103 | Programa principal. Especificaciones | 0% → 100% |
| 104 | Documentación firmware. Control de cambios | 0% → 100% |
| 105 | **Verificación hardware** | 0% → 90% |
| 106 | Verificación inicial | 0% → 100% |
| 107 | Verificación firmware | 0% → 100% |
| 108 | Resolución de problemas | 0% → 100% |
| 109 | Análisis de prestaciones | 0% → 100% |
| 110 | Montaje final. Piezas mecánicas | 0% → 100% |
| 115 | ENTREGA 15 SEMANA | 0% → 100% |

## Version 20 (saved 2026-02-03)

Note of the change: Codigo entero revisado

Last finish stays 2026-02-06. Complete tasks 100 → 103.

Changed:

| ID | Task | Start | Finish | Duration | Complete |
| --- | --- | --- | --- | --- | --- |
| 1 | **TP1:SE** |  |  |  | 88% → 100% |
| 105 | **Verificación hardware** |  | 2026-02-05 → 2026-01-21 (-15d) | 40d → 29d | 90% → 100% |
| 110 | Montaje final. Piezas mecánicas |  | 2026-01-22 → 2026-01-12 (-10d) | 10d → 2d |  |
| 111 | Pruebas de campo | 2026-01-23 → 2026-01-13 (-10d) | 2026-02-05 → 2026-01-21 (-15d) | 10d → 7d | 0% → 100% |
| 116 | **Documentación** |  |  |  | 70% → 100% |
| 117 | Realización informe |  |  |  | 70% → 100% |
| 118 | ENTREGA FINAL |  |  |  | 0% → 100% |

## Version 21 (saved 2026-02-05)

Note of the change: gantt final

Last finish stays 2026-02-06.

Changed:

| ID | Task | Start | Finish | Duration | Predecessors |
| --- | --- | --- | --- | --- | --- |
| 52 | Rutado de conexiones |  | 2025-10-30 → 2025-10-28 (-2d) | 5d → 3d |  |
| 54 | Generación de ficheros para el fabricante (gerber) |  | 2025-11-06 → 2025-10-30 (-7d) | 7d → 2d |  |
| 56 | **PCB1:Diseño de la placa de circuito impreso** |  | 2025-11-07 → 2025-11-10 (+3d) | 16d → 17d |  |
| 64 | Generación de ficheros para el fabricante (gerber) | 2025-10-29 → 2025-10-31 (+2d) | 2025-11-06 → 2025-11-10 (+4d) |  | 61, 63 → 61, 62, 63 |
| 66 | **PCB2: Diseño de la placa de circuito impreso** |  | 2025-11-07 → 2025-11-14 (+7d) | 16d → 21d |  |
| 72 | Rutado de conexiones |  | 2025-10-30 → 2025-11-05 (+6d) | 5d → 9d |  |
| 74 | Generación de ficheros para el fabricante (gerber) | 2025-10-29 → 2025-11-06 (+8d) | 2025-11-06 → 2025-11-14 (+8d) |  | 71, 73 → 71, 72, 73 |
| 76 | **PCB3: Diseño de la placa de circuito impreso** |  | 2025-11-07 → 2025-11-10 (+3d) | 16d → 17d |  |
| 84 | Generación de ficheros para el fabricante (gerber) | 2025-10-29 → 2025-10-31 (+2d) | 2025-11-06 → 2025-11-10 (+4d) |  | 81, 83 → 81, 82, 83 |
| 89 | **Fabricación de la placa de circuito impreso** | 2025-11-10 → 2025-11-18 (+8d) | 2025-11-24 → 2025-12-09 (+15d) | 11d → 16d |  |
| 90 | Envío al fabricante | 2025-11-10 → 2025-11-18 (+8d) | 2025-11-13 → 2025-11-21 (+8d) |  |  |
| 91 | Recepción y revisión | 2025-11-14 → 2025-11-24 (+10d) | 2025-11-14 → 2025-12-01 (+17d) | 1d → 6d |  |
| 92 | Montaje de componentes | 2025-11-17 → 2025-12-02 (+15d) | 2025-11-24 → 2025-12-09 (+15d) |  |  |
| 94 | **Realización Hardware FPGA.** | 2025-11-21 → 2025-12-01 (+10d) | 2025-12-11 → 2025-12-19 (+8d) |  |  |
| 95 | Core: LarVA. | 2025-11-21 → 2025-12-01 (+10d) | 2025-11-27 → 2025-12-05 (+8d) |  |  |
| 96 | Periféricos: UART0/1/2, SPI0/1, Temporizador, GPOut, GPIn,.. | 2025-11-21 → 2025-12-01 (+10d) | 2025-12-01 → 2025-12-09 (+8d) |  |  |
| 97 | Simulación | 2025-12-02 → 2025-12-10 (+8d) | 2025-12-11 → 2025-12-19 (+8d) |  |  |
| 100 | **Realización Firmware. Simulación y depuración** | 2025-12-12 → 2025-12-22 (+10d) | 2025-12-31 → 2026-02-06 (+37d) | 14d → 35d |  |
| 101 | Control de elementos hardware: drivers | 2025-12-12 → 2025-12-22 (+10d) | 2025-12-31 → 2026-01-14 (+14d) | 14d → 18d |  |
| 102 | Verificación | 2025-12-12 → 2025-12-22 (+10d) | 2025-12-31 → 2026-01-16 (+16d) | 14d → 20d |  |
| 103 | Programa principal. Especificaciones | 2025-12-12 → 2025-12-22 (+10d) | 2025-12-31 → 2026-01-19 (+19d) | 14d → 21d |  |
| 104 | Documentación firmware. Control de cambios | 2025-12-12 → 2025-12-22 (+10d) | 2025-12-31 → 2026-02-06 (+37d) | 14d → 35d |  |
| 105 | **Verificación hardware** | 2025-12-12 → 2025-12-22 (+10d) | 2026-01-21 → 2026-01-23 (+2d) | 29d → 25d |  |
| 106 | Verificación inicial | 2025-12-12 → 2025-12-22 (+10d) | 2026-01-08 → 2026-01-19 (+11d) | 20d → 21d |  |
| 107 | Verificación firmware | 2025-12-12 → 2025-12-22 (+10d) | 2026-01-08 → 2026-01-19 (+11d) | 20d → 21d |  |
| 108 | Resolución de problemas | 2025-12-12 → 2025-12-22 (+10d) | 2026-01-08 → 2026-01-19 (+11d) | 20d → 21d |  |
| 109 | Análisis de prestaciones | 2025-12-12 → 2025-12-22 (+10d) | 2026-01-08 → 2026-01-16 (+8d) |  |  |
| 110 | Montaje final. Piezas mecánicas | 2026-01-09 → 2026-01-19 (+10d) | 2026-01-12 → 2026-01-20 (+8d) |  |  |
| 111 | Pruebas de campo | 2026-01-13 → 2026-01-21 (+8d) | 2026-01-21 → 2026-01-23 (+2d) | 7d → 3d |  |
